# Gantt_General_Proyecto

How a schedule from MS Project changed from version to version. A marks actual dates.

## Version 1 (saved 2024-09-22, file Roadmap.mpp)

Note of the change: UPD: Mover documentos a fase 1

| ID | WBS | Task | Duration | Start | Finish | Predecessors | Complete | Total float |
| --- | --- | --- | --- | --- | --- | --- | --- | --- |
| 1 | 1 | **Sprint 1** | 20d | 2024-08-12 A | 2024-09-06 A |  | 100% |  |
| 2 | 1.1 | **Análisis y estudio de problemática** | 20d | 2024-08-12 A | 2024-09-06 A |  | 100% |  |
| 3 |  | Generar carta gantt | 1d | 2024-08-12 A | 2024-08-12 A |  | 100% |  |
| 4 |  | Generar alcances del proyecto | 1d | 2024-08-13 A | 2024-08-13 A | 3 | 100% |  |
| 5 |  | Generar presentación comercial | 5d | 2024-08-14 A | 2024-08-20 A | 4 | 100% |  |
| 6 |  | Actualizar carta gantt | 1d | 2024-08-21 A | 2024-08-21 A | 5 | 100% |  |
| 7 |  | Generar diagramas para el sistema | 11d | 2024-08-22 A | 2024-09-05 A | 6 | 100% |  |
| 8 |  | Generar presentación con gestión del proyecto | 1d | 2024-09-06 A | 2024-09-06 A | 7 | 100% |  |
| 9 |  | Entrega fase 1 (Presentación + KickOff APT) | 0d | 2024-09-06 A | 2024-09-06 A | 8 | 100% |  |
| 10 | 2 | **Sprint 2** | 15d | 2024-09-09 A | 2024-09-27 | 1 | 67% | 0d |
| 11 | 2.1 | **Establecer plataformas de gestión** | 5d | 2024-09-09 A | 2024-09-16 A | 2 | 100% |  |
| 12 |  | Elegir herramienta de gestión | 1d | 2024-09-09 A | 2024-09-09 A |  | 100% |  |
| 13 |  | Configurar herramienta de gestión | 4d | 2024-09-10 A | 2024-09-13 A | 12 | 100% |  |
| 14 |  | Roadmap configurado / Gestión de proyecto | 0d | 2024-09-16 A | 2024-09-16 A | 13 | 100% |  |
| 15 | 2.2 | **Infraestructura** | 10d | 2024-09-16 A | 2024-09-27 | 11 | 50% | 0d |
| 16 | 2.2.1 | **Como administrador, necesito un servidor al cual acceder y en el cual instalar el software necesario para el funcionamiento del sistema** | 5d | 2024-09-16 A | 2024-09-20 A |  | 100% |  |
| 17 |  | Seleccionar tipo de servidor (on-premise o cloud) | 1d | 2024-09-16 A | 2024-09-16 A |  | 100% |  |
| 18 |  | Aplicar los diseños de arquitectura del software | 4d | 2024-09-17 A | 2024-09-20 A | 17 | 100% |  |
| 19 | 2.2.2 | **Como desarrollador, necesito acceder a entornos de desarrollo y de producción** | 5d | 2024-09-23 | 2024-09-27 | 16 |  | 0d |
| 20 |  | Crear pipelines automatizados para cambiar de entorno | 3d | 2024-09-23 | 2024-09-25 |  |  | 0d |
| 21 |  | Crear sistema de pasos a producción mediante releases | 2d | 2024-09-26 | 2024-09-27 | 20 |  | 0d |
| 22 |  | Servidores operativos | 0d | 2024-09-27 | 2024-09-27 | 19 |  | 0d |
| 23 | 3 | **Sprint 3** | 15d | 2024-09-30 | 2024-10-18 | 10 |  | 0d |
| 24 | 3.1 | **Base de datos** | 15d | 2024-09-30 | 2024-10-18 | 15 |  | 0d |
| 25 | 3.1.1 | **Como desarrollador, necesito acceder a una base de datos que me permita almacenar los datos de la API** | 5d | 2024-09-30 | 2024-10-04 |  |  | 0d |
| 26 |  | Seleccionar un motor de base de datos | 1d | 2024-09-30 | 2024-09-30 |  |  | 0d |
| 27 |  | Instalar motor de base de datos y crear accesos y usuarios con permisos | 1d | 2024-10-01 | 2024-10-01 | 26 |  | 0d |
| 28 |  | Aplicar el modelo MER para crear la base de datos | 3d | 2024-10-02 | 2024-10-04 | 27 |  | 0d |
| 29 | 3.1.2 | **Como científico de datos, necesito acceder a una base de datos normalizada y pensada para este proceso** | 10d | 2024-10-07 | 2024-10-18 | 25 |  | 0d |
| 30 |  | Generar acceso y usuario para leer los datos | 1d | 2024-10-07 | 2024-10-07 |  |  | 0d |
| 31 |  | Generar ETL para adquisición de datos de entrenamiento | 9d | 2024-10-08 | 2024-10-18 | 30 |  | 0d |
| 32 |  | Base de datos operativa | 0d | 2024-10-18 | 2024-10-18 | 29 |  | 0d |
| 33 | 4 | **Sprint 4** | 25d | 2024-10-21 | 2024-11-22 | 23 |  | 0d |
| 34 | 4.1 | **Procesamiento y análisis de datos** | 15d | 2024-10-21 | 2024-11-08 |  |  | 0d |
| 35 | 4.1.1 | **Como científico de datos, necesito herramientas para explorar y analizar los datos adquiridos, y posteriormente generar un modelo predictivo adecuado** | 15d | 2024-10-21 | 2024-11-08 |  |  | 0d |
| 36 |  | Levantar ambiente jupyter lab | 0.5d | 2024-10-21 | 2024-10-21 |  |  | 0d |
| 37 |  | Generar credenciales para el ambiente | 0.5d | 2024-10-21 | 2024-10-21 | 36 |  | 0d |
| 38 |  | Realizar análisis de datos | 10d | 2024-10-22 | 2024-11-04 | 37 |  | 0d |
| 39 |  | Generar cluster | 2d | 2024-11-05 | 2024-11-06 | 38 |  | 0d |
| 40 |  | Generar modelo predictivo | 2d | 2024-11-07 | 2024-11-08 | 39 |  | 0d |
| 41 |  | Modelo(s) predictivo(s) | 0d | 2024-11-08 | 2024-11-08 | 35 |  | 0d |
| 42 | 4.2 | **Motor de recomendación (API)** | 15d | 2024-10-21 | 2024-11-08 |  |  | 0d |
| 43 |  | Instalar dependencias de la API en Python | 2d | 2024-10-21 | 2024-10-22 |  |  | 0d |
| 44 |  | Generar endpoints para respuesta de predicción | 10d | 2024-10-23 | 2024-11-05 | 43 |  | 0d |
| 45 |  | Almacenar los datos de cada solicitud | 3d | 2024-11-06 | 2024-11-08 | 44 |  | 0d |
| 46 |  | API operativa | 0d | 2024-11-08 | 2024-11-08 | 45 |  | 0d |
| 47 | 4.3 | **Automatizar el análisis de datos y empaquetarlo** | 10d | 2024-11-11 | 2024-11-22 | 34, 42 |  | 0d |
| 48 | 4.3.1 | **Como dueño de un negocio, necesito tener un plugin que sea de fácil uso para integrar en mi página de eCommerce sin grandes conocimientos ténicos** | 10d | 2024-11-11 | 2024-11-22 |  |  | 0d |
| 49 |  | Estandarizar el análisis de datos y los reentrenamientos | 8d | 2024-11-11 | 2024-11-20 |  |  | 0d |
| 50 |  | Estandarizar código de la API para que su uso pueda adaptarse | 8d | 2024-11-11 | 2024-11-20 |  |  | 0d |
| 51 |  | Empaquetar el código y el análisis de datos en un plugin | 2d | 2024-11-21 | 2024-11-22 | 49, 50 |  | 0d |
| 52 |  | Plugin woocommerce | 0d | 2024-11-22 | 2024-11-22 | 48 |  | 0d |
| 53 | 5 | **Sprint 5** | 10d | 2024-11-25 | 2024-12-06 |  |  | 0d |
| 54 | 5.1 | **Marcha blanca y pilotaje** | 10d | 2024-11-25 | 2024-12-06 | 47 |  | 0d |
| 55 | 5.1.1 | **Como dueño de un negocio, necesito alta operabilidad y bajo porcentaje de errores, así como confianza en que funciona** | 10d | 2024-11-25 | 2024-12-06 |  |  | 0d |
| 56 |  | Integrar plugin en algunas páginas y monitorearlo activamente | 10d | 2024-11-25 | 2024-12-06 |  |  | 0d |
| 57 |  | Generar una página de demo para utilizar y revisar feedback inmediato | 10d | 2024-11-25 | 2024-12-06 |  |  | 0d |
| 58 |  | Entregable fase 3 (Test plans y plugin marcha blanca) | 0d | 2024-12-06 | 2024-12-06 | 57 |  | 0d |

## Version 2 (saved 2024-10-01, file Roadmap_01_10_2024.mpp)

Note of the change: Merge pull request #6 from Alvaro-AAC/test

Last finish stays 2024-12-06. Complete tasks 12 → 18.

Changed:

| ID | Task | Start | Finish | Complete | Total float |
| --- | --- | --- | --- | --- | --- |
| 10 | **Sprint 2** |  | 2024-09-27 A | 67% → 100% | 0d → none |
| 15 | **Infraestructura** |  | 2024-09-27 A | 50% → 100% | 0d → none |
| 19 | **Como desarrollador, necesito acceder a entornos de desarrollo y de producción** | 2024-09-23 A | 2024-09-27 A | 0% → 100% | 0d → none |
| 20 | Crear pipelines automatizados para cambiar de entorno | 2024-09-23 A | 2024-09-25 A | 0% → 100% | 0d → none |
| 21 | Crear sistema de pasos a producción mediante releases | 2024-09-26 A | 2024-09-27 A | 0% → 100% | 0d → none |
| 22 | Servidores operativos | 2024-09-27 A | 2024-09-27 A | 0% → 100% | 0d → none |
| 23 | **Sprint 3** | 2024-09-30 A |  | 0% → 33% |  |
| 24 | **Base de datos** | 2024-09-30 A |  | 0% → 33% |  |
| 25 | **Como desarrollador, necesito acceder a una base de datos que me permita almacenar los datos de la API** | 2024-09-30 A | 2024-10-04 A | 0% → 100% | 0d → none |
| 26 | Seleccionar un motor de base de datos | 2024-09-30 A | 2024-09-30 A | 0% → 100% | 0d → none |
| 27 | Instalar motor de base de datos y crear accesos y usuarios con permisos | 2024-10-01 A | 2024-10-01 A | 0% → 100% | 0d → none |
| 28 | Aplicar el modelo MER para crear la base de datos | 2024-10-02 A | 2024-10-04 A | 0% → 100% | 0d → none |

## Version 3 (saved 2024-10-28, file Roadmap_28_10_2024.mpp)

Note of the change: UPD: Roadmap actualizado 28 octubre

Last finish stays 2024-12-06. Complete tasks 18 → 25.

Changed:

| ID | Task | Start | Finish | Complete | Total float |
| --- | --- | --- | --- | --- | --- |
| 23 | **Sprint 3** |  | 2024-10-18 A | 33% → 100% | 0d → none |
| 24 | **Base de datos** |  | 2024-10-18 A | 33% → 100% | 0d → none |
| 29 | **Como científico de datos, necesito acceder a una base de datos normalizada y pensada para este proceso** | 2024-10-07 A | 2024-10-18 A | 0% → 100% | 0d → none |
| 30 | Generar acceso y usuario para leer los datos | 2024-10-07 A | 2024-10-07 A | 0% → 100% | 0d → none |
| 31 | Generar ETL para adquisición de datos de entrenamiento | 2024-10-08 A | 2024-10-18 A | 0% → 100% | 0d → none |
| 32 | Base de datos operativa | 2024-10-18 A | 2024-10-18 A | 0% → 100% | 0d → none |
| 33 | **Sprint 4** | 2024-10-21 A |  | 0% → 41% |  |
| 34 | **Procesamiento y análisis de datos** | 2024-10-21 A |  | 0% → 80% |  |
| 35 | **Como científico de datos, necesito herramientas para explorar y analizar los datos adquiridos, y posteriormente generar un modelo predictivo adecuado** | 2024-10-21 A |  | 0% → 80% |  |
| 36 | Levantar ambiente jupyter lab | 2024-10-21 A | 2024-10-21 A | 0% → 100% | 0d → none |
| 37 | Generar credenciales para el ambiente | 2024-10-21 A | 2024-10-21 A | 0% → 100% | 0d → none |
| 38 | Realizar análisis de datos | 2024-10-22 A | 2024-11-04 A | 0% → 100% | 0d → none |
| 39 | Generar cluster | 2024-11-05 A |  | 0% → 50% |  |
| 42 | **Motor de recomendación (API)** | 2024-10-21 A |  | 0% → 51% |  |
| 43 | Instalar dependencias de la API en Python | 2024-10-21 A | 2024-10-22 A | 0% → 100% | 0d → none |
| 44 | Generar endpoints para respuesta de predicción | 2024-10-23 A |  | 0% → 50% | 0d → 0.6d |
| 45 | Almacenar los datos de cada solicitud | 2024-11-06 A |  | 0% → 20% |  |
